# HANIA_INCREMENTAL_MODEL

Schedule from MS Project, 2024-08-27 to 2024-10-02, costs in $, A marks actual dates.

## Calendars

- Standard: Mon-Fri 08:00-12:00, 13:00-17:00; Sat-Sun off.

## Resources

| Resource | Group | Rate | Cost per use |
| --- | --- | --- | --- |
| Sam | developer | 2 |  |
| Michael | developer | 2 |  |
| Jane | designer | 1.5 |  |
| Bob | QA engineer | 1 |  |
| Sara | Software Tester | 1.2 |  |
| Hana | Database Administrator | 2 |  |
| Soha | Product Catalog Specialist | 2 |  |
| Maha | Payment Gateway Specialist | 2 |  |
| Sofia | Security Expert | 2 |  |
| Ahmed | Order Management Specialist | 1.7 |  |
| Ali | Logistics Specialist | 2 |  |
| Visual Studio |  |  | 10 |
| Adobe Creative Cloud |  |  | 10 |
| JIRA |  |  | 10 |
| TestRail |  |  | 10 |
| MySQL |  |  | 12 |
| Git |  |  | 5 |
| AWS |  |  | 14 |
| Google Cloud |  |  | 16 |
| Stripe |  |  | 20 |
| PayPal |  |  | 5 |
| SSL certificates |  |  | 9 |
| PIM System |  |  | 19 |

## Schedule

| ID | WBS | Task | Type | Duration | Start | Finish | Predecessors | Complete | Resources | Work | Actual work | Cost | Actual cost |
| --- | --- | --- | --- | --- | --- | --- | --- | --- | --- | --- | --- | --- | --- |
| 1 | 1 | E-COMMERCE WEBSITE |  | 17d | 2024-08-27 A | 2024-09-18 A |  | 100% | Ali; Bob; Michael; Sam; Hana; Ahmed; Sofia; Soha; Sara; Jane; Maha; Adobe Creative Cloud; AWS; Git; Google Cloud; JIRA; MySQL; PayPal; PIM System; SSL certificates; Stripe; TestRail; Visual Studio | 1496h | 1496h | 2,878.4 | 2,878.4 |
| 2 | 2 | **Increment 1: User Management** |  | 13d | 2024-08-27 A | 2024-09-13 A |  | 100% |  | 104h | 104h | 302.6 | 302.6 |
| 3 | 2.1 | **Requirements:** |  | 2d | 2024-08-27 A | 2024-08-28 A |  | 100% |  | 16h | 16h | 62 | 62 |
| 4 | 2.1.1 | User registration and login |  | 1d | 2024-08-27 A | 2024-08-27 A |  | 100% | Sam; Visual Studio; Git | 8h | 8h | 31 | 31 |
| 5 | 2.1.2 | User profile management |  | 1d | 2024-08-28 A | 2024-08-28 A | 4 | 100% | Michael; Visual Studio; Git | 8h | 8h | 31 | 31 |
| 6 | 2.2 | **Design:** |  | 3d | 2024-08-29 A | 2024-09-02 A | 3 | 100% |  | 24h | 24h | 62 | 62 |
| 7 | 2.2.1 | User interface design for registration and login pages |  | 2d | 2024-08-29 A | 2024-08-30 A |  | 100% | Jane; Adobe Creative Cloud | 16h | 16h | 34 | 34 |
| 8 | 2.2.2 | Database design for storing user information |  | 1d | 2024-09-02 A | 2024-09-02 A | 7 | 100% | Hana; MySQL | 8h | 8h | 28 | 28 |
| 9 | 2.3 | **Development:** |  | 6d | 2024-09-03 A | 2024-09-10 A | 6 | 100% |  | 48h | 48h | 126 | 126 |
| 10 | 2.3.1 | Develop user registration and login functionality |  | 3d | 2024-09-03 A | 2024-09-05 A |  | 100% | Sam; Michael; Visual Studio; Git | 24h | 24h | 63 | 63 |
| 11 | 2.3.2 | Implement user profile management |  | 3d | 2024-09-06 A | 2024-09-10 A | 10 | 100% | Sam; Michael; Visual Studio; Git | 24h | 24h | 63 | 63 |
| 12 | 2.4 | **Testing:** |  | 2d | 2024-09-11 A | 2024-09-12 A | 9 | 100% |  | 16h | 16h | 52.6 | 52.6 |
| 13 | 2.4.1 | Test user registration and login functionality |  | 1d | 2024-09-11 A | 2024-09-11 A |  | 100% | Sara; Visual Studio; Git | 8h | 8h | 24.6 | 24.6 |
| 14 | 2.4.2 | Validate user profile management |  | 1d | 2024-09-12 A | 2024-09-12 A | 13 | 100% | Bob; JIRA; TestRail | 8h | 8h | 28 | 28 |
| 15 | 2.5 | USER MANAGEMENT COMPLETED | milestone, manual | 0d | 2024-09-13 A | 2024-09-13 A | 14 | 100% |  |  |  |  |  |
| 16 | 3 | **Increment 2: Product Catalog** |  | 4d | 2024-09-13 A | 2024-09-18 A |  | 100% |  | 88h | 88h | 302.8 | 302.8 |
| 17 | 3.1 | **Requirements:** |  | 2d | 2024-09-13 A | 2024-09-16 A |  | 100% |  | 16h | 16h | 62 | 62 |
| 18 | 3.1.1 | Product search and filtering |  | 1d | 2024-09-13 A | 2024-09-13 A |  | 100% | Soha; Visual Studio; Git | 8h | 8h | 31 | 31 |
| 19 | 3.1.2 | Product details page |  | 1d | 2024-09-16 A | 2024-09-16 A | 18 | 100% | Soha; Visual Studio; Git | 8h | 8h | 31 | 31 |
| 20 | 3.2 | **Design:** |  | 2d | 2024-09-13 A | 2024-09-16 A |  | 100% |  | 16h | 16h | 50 | 50 |
| 21 | 3.2.1 | User interface design for search and filtering |  | 1d | 2024-09-13 A | 2024-09-13 A |  | 100% | Jane; Adobe Creative Cloud | 8h | 8h | 22 | 22 |
| 22 | 3.2.2 | Database design for storing product information |  | 1d | 2024-09-16 A | 2024-09-16 A | 21 | 100% | Hana; MySQL | 8h | 8h | 28 | 28 |
| 23 | 3.3 | **Development:** |  | 4d | 2024-09-13 A | 2024-09-18 A |  | 100% |  | 32h | 32h | 132 | 132 |
| 24 | 3.3.1 | Develop product search and filtering functionality |  | 2d | 2024-09-13 A | 2024-09-16 A |  | 100% | Soha; Visual Studio; Git; PIM System | 16h | 16h | 66 | 66 |
| 25 | 3.3.2 | Implement product details page |  | 2d | 2024-09-17 A | 2024-09-18 A | 24 | 100% | Soha; Visual Studio; Git; PIM System | 16h | 16h | 66 | 66 |

| ID | WBS | Task | Type | Duration | Start | Finish | Predecessors | Complete | Resources | Work | Actual work | Cost | Actual cost |
| --- | --- | --- | --- | --- | --- | --- | --- | --- | --- | --- | --- | --- | --- |
| 26 | 3.4 | **Testing:** |  | 3d | 2024-09-13 A | 2024-09-17 A |  | 100% |  | 24h | 24h | 58.8 | 58.8 |
| 27 | 3.4.1 | Test product search and filtering functionality |  | 2d | 2024-09-13 A | 2024-09-16 A |  | 100% | Sara; Visual Studio; Git | 16h | 16h | 34.2 | 34.2 |
| 28 | 3.4.2 | Validate product details page |  | 1d | 2024-09-17 A | 2024-09-17 A | 27 | 100% | Sara; Visual Studio; Git | 8h | 8h | 24.6 | 24.6 |
| 29 | 3.5 | PRODUCT CATLOG COMPLETED | milestone, manual | 0d | 2024-09-18 A | 2024-09-18 A | 28 | 100% |  |  |  |  |  |
| 30 | 4 | **Increment 3: Payment Processing** |  | 6d | 2024-09-19 A | 2024-09-27 A | 16 | 100% |  | 144h | 144h | 500.6 | 500.6 |
| 31 | 4.1 | **Requirements:** |  | 5d | 2024-09-19 A | 2024-09-25 A |  | 100% |  | 40h | 40h | 144 | 144 |
| 32 | 4.1.1 | Secure payment processing |  | 2d | 2024-09-19 A | 2024-09-20 A |  | 100% | Sofia; SSL certificates | 16h | 16h | 41 | 41 |
| 33 | 4.1.2 | Payment gateway integration |  | 3d | 2024-09-23 A | 2024-09-25 A | 32 | 100% | Maha; AWS; Google Cloud; PayPal; Stripe | 24h | 24h | 103 | 103 |
| 34 | 4.2 | **Design:** |  | 5d | 2024-09-19 A | 2024-09-25 A |  | 100% |  | 40h | 40h | 101 | 101 |
| 35 | 4.2.1 | System architecture for integrating with payment gateways |  | 3d | 2024-09-19 A | 2024-09-23 A |  | 100% | Sofia; SSL certificates | 24h | 24h | 57 | 57 |
| 36 | 4.2.2 | Database design for storing order data |  | 2d | 2024-09-24 A | 2024-09-25 A | 35 | 100% | Hana; MySQL | 16h | 16h | 44 | 44 |
| 37 | 4.3 | **Development:** |  | 6d | 2024-09-19 A | 2024-09-26 A |  | 100% |  | 48h | 48h | 160 | 160 |
| 38 | 4.3.1 | Integrate with payment gateways |  | 3d | 2024-09-19 A | 2024-09-23 A |  | 100% | Maha; AWS; Google Cloud; PayPal; Stripe | 24h | 24h | 103 | 103 |
| 39 | 4.3.2 | Implement secure payment processing |  | 3d | 2024-09-24 A | 2024-09-26 A | 38 | 100% | Sofia; SSL certificates | 24h | 24h | 57 | 57 |
| 40 | 4.4 | **Testing:** |  | 2d | 2024-09-19 A | 2024-09-20 A |  | 100% |  | 16h | 16h | 95.6 | 95.6 |
| 41 | 4.4.1 | Test payment processing functionality |  | 1d | 2024-09-19 A | 2024-09-19 A |  | 100% | Sara; Visual Studio; Git | 8h | 8h | 24.6 | 24.6 |
| 42 | 4.4.2 | Validate payment gateway integration |  | 1d | 2024-09-20 A | 2024-09-20 A | 41 | 100% | Maha; AWS; Google Cloud; PayPal; Stripe | 8h | 8h | 71 | 71 |
| 43 | 4.5 | PAYMENT PROCESSING COMPLETED | milestone, manual | 0d | 2024-09-27 A | 2024-09-27 A | 42 | 100% |  |  |  |  |  |
| 44 | 5 | **Increment 4: Order Management** |  | 4d | 2024-09-27 A | 2024-10-02 A | 30 | 100% |  | 96h | 96h | 270.4 | 270.4 |
| 45 | 5.1 | **Requirements:** |  | 4d | 2024-09-27 A | 2024-10-02 A |  | 100% |  | 32h | 32h | 84.4 | 84.4 |
| 46 | 5.1.1 | Order placement and management |  | 2d | 2024-09-27 A | 2024-09-30 A |  | 100% | Ahmed; Visual Studio; Git | 16h | 16h | 42.2 | 42.2 |
| 47 | 5.1.2 | Order tracking and history |  | 2d | 2024-10-01 A | 2024-10-02 A | 46 | 100% | Ahmed; Visual Studio; Git | 16h | 16h | 42.2 | 42.2 |
| 48 | 5.2 | **Design:** |  | 3d | 2024-09-27 A | 2024-10-01 A |  | 100% |  | 24h | 24h | 62 | 62 |
| 49 | 5.2.1 | User interface design for order placement and management |  | 2d | 2024-09-27 A | 2024-09-30 A |  | 100% | Jane; Adobe Creative Cloud | 16h | 16h | 34 | 34 |
| 50 | 5.2.2 | Database design for storing order data |  | 1d | 2024-10-01 A | 2024-10-01 A | 49 | 100% | Hana; MySQL | 8h | 8h | 28 | 28 |

| ID | WBS | Task | Type | Duration | Start | Finish | Predecessors | Complete | Resources | Work | Actual work | Cost | Actual cost |
| --- | --- | --- | --- | --- | --- | --- | --- | --- | --- | --- | --- | --- | --- |
| 51 | 5.3 | **Development:** |  | 3d | 2024-09-27 A | 2024-10-01 A |  | 100% |  | 24h | 24h | 70.8 | 70.8 |
| 52 | 5.3.1 | Develop order placement and management functionality |  | 1d | 2024-09-27 A | 2024-09-27 A |  | 100% | Ahmed; Visual Studio; Git | 8h | 8h | 28.6 | 28.6 |
| 53 | 5.3.2 | Implement order tracking and history |  | 2d | 2024-09-30 A | 2024-10-01 A | 52 | 100% | Ahmed; Visual Studio; Git | 16h | 16h | 42.2 | 42.2 |
| 54 | 5.4 | **Testing:** |  | 2d | 2024-09-27 A | 2024-09-30 A |  | 100% |  | 16h | 16h | 53.2 | 53.2 |
| 55 | 5.4.1 | Test order placement and management functionality |  | 1d | 2024-09-27 A | 2024-09-27 A |  | 100% | Sara; Visual Studio; Git | 8h | 8h | 24.6 | 24.6 |
| 56 | 5.4.2 | Validate order tracking and history |  | 1d | 2024-09-30 A | 2024-09-30 A | 55 | 100% | Ahmed; Visual Studio; Git | 8h | 8h | 28.6 | 28.6 |
| 57 | 5.5 | ORDER MANAGEMENT COMPLETED | milestone, manual | 0d | 2024-10-01 A | 2024-10-01 A | 56 | 100% |  |  |  |  |  |
